# Gantt

Schedule from MS Project, 2018-02-28 to 2018-04-30, 7 hours a day.
Microsoft Corporation

## Calendars

- Standard: Mon-Fri 09:00-12:00, 14:00-18:00; Sat-Sun off.

## Resources

| Resource |
| --- |
| Girard Paul |
| Vincent Picot |
| Sebastien Cornibé |
| Léa Ries |
| Kevin Hadjari |

## Schedule

| ID | WBS | Task | Duration | Start | Finish | Predecessors | Baseline start | Baseline finish | Baseline duration | Total slack | Free slack | Constraint | Resources | Work |
| --- | --- | --- | --- | --- | --- | --- | --- | --- | --- | --- | --- | --- | --- | --- |
| 1 | 1 | **Partie graphique** | 11d | 2018-02-28 | 2018-03-14 |  | 2018-02-28 | 2018-03-14 | 11d | 27d | 7d |  |  | 175h |
| 2 | 1.1 | Fenêtre d'accueil | 1d | 2018-02-28 | 2018-02-28 |  | 2018-02-28 | 2018-02-28 | 1d | 37d |  |  | Sebastien Cornibé | 7h |
| 3 | 1.2 | Ajout d'un bien | 1d | 2018-02-28 | 2018-02-28 |  | 2018-02-28 | 2018-02-28 | 1d | 37d |  | start no earlier than 2018-02-28 | Kevin Hadjari | 7h |
| 4 | 1.3 | Ajout d'un commercial | 1d | 2018-02-28 | 2018-02-28 |  | 2018-02-28 | 2018-02-28 | 1d | 37d |  |  | Léa Ries | 7h |
| 5 | 1.4 | Impression d'une fiche de bien | 1d | 2018-03-01 | 2018-03-01 |  | 2018-03-01 | 2018-03-01 | 1d | 36d |  | start no earlier than 2018-03-01 | Léa Ries | 7h |
| 6 | 1.5 | Impression fiche de souhait | 1d | 2018-03-01 | 2018-03-01 |  | 2018-03-01 | 2018-03-01 | 1d | 36d |  | start no earlier than 2018-03-01 | Sebastien Cornibé | 7h |
| 7 | 1.6 | Création visite | 1d | 2018-03-02 | 2018-03-02 |  | 2018-03-02 | 2018-03-02 | 1d | 35d |  | start no earlier than 2018-03-02 | Sebastien Cornibé | 7h |
| 8 | 1.7 | Création proposition de visite | 2d | 2018-03-05 | 2018-03-06 |  | 2018-03-05 | 2018-03-06 | 2d | 33d |  | finish no earlier than 2018-03-06 | Sebastien Cornibé | 14h |
| 9 | 1.8 | Liste des visites | 2d | 2018-03-02 | 2018-03-05 |  | 2018-03-02 | 2018-03-05 | 2d | 34d |  | finish no earlier than 2018-03-05 | Léa Ries | 14h |
| 10 | 1.9 | Liste des commerciaux | 1d | 2018-03-01 | 2018-03-01 |  | 2018-03-01 | 2018-03-01 | 1d | 36d |  | start no earlier than 2018-03-01 | Léa Ries | 7h |
| 11 | 1.10 | Fiche de souhait | 2d | 2018-03-07 | 2018-03-08 |  | 2018-03-07 | 2018-03-08 | 2d | 31d |  | start no earlier than 2018-03-07 | Sebastien Cornibé | 14h |
| 12 | 1.11 | Catalogue des biens | 3d | 2018-03-06 | 2018-03-08 |  | 2018-03-06 | 2018-03-08 | 3d | 31d |  | start no earlier than 2018-03-06 | Léa Ries | 21h |
| 13 | 1.12 | Ajouter un client | 2d | 2018-03-02 | 2018-03-05 |  | 2018-03-02 | 2018-03-05 | 2d | 34d |  | finish no earlier than 2018-03-05 | Kevin Hadjari | 14h |
| 14 | 1.13 | Recherche d'un client | 3d | 2018-03-06 | 2018-03-08 |  | 2018-03-06 | 2018-03-08 | 3d | 31d |  | start no earlier than 2018-03-06 | Kevin Hadjari | 21h |
| 15 | 1.14 | Lien entre les fenêtres (evenementiel) | 4d | 2018-03-09 | 2018-03-14 |  | 2018-03-09 | 2018-03-14 | 4d | 25d | 0d | start no earlier than 2018-03-09 | Léa Ries | 28h |
| 16 | 2 | **Création de la base de données** | 11d | 2018-02-28 | 2018-03-14 |  | 2018-02-28 | 2018-03-14 | 11d | 25d | 7d |  |  | 168h |
| 17 | 2.1 | Créer la base | 1d | 2018-02-28 | 2018-02-28 |  | 2018-02-28 | 2018-02-28 | 1d | 25d | 0d |  | Girard Paul | 7h |
| 18 | 2.2 | Tester import sous C# | 1d | 2018-03-01 | 2018-03-01 | 17 | 2018-03-01 | 2018-03-01 | 1d | 25d | 0d | start no earlier than 2018-03-01 | Girard Paul | 7h |
| 19 | 2.3 | Créer le jeu de données | 5d | 2018-03-02 | 2018-03-08 | 18 | 2018-03-02 | 2018-03-08 | 5d | 25d | 0d | start no earlier than 2018-03-02 | Vincent Picot | 35h |
| 20 | 2.4 | Créer procédures stockées (facultatif) | 5d | 2018-03-02 | 2018-03-08 | 18 | 2018-03-02 | 2018-03-08 | 5d | 25d | 0d |  | Girard Paul | 35h |
| 21 | 2.5 | Ecrire et tester les requêtes sous SQL Server | 4d | 2018-03-09 | 2018-03-14 | 19, 20 | 2018-03-09 | 2018-03-14 | 4d | 25d | 0d |  | Girard Paul; Kevin Hadjari; Vincent Picot | 84h |
| 22 | 3 | **Intégration des requêtes aux fenêtres (Linq)** | 33d | 2018-03-15 | 2018-04-30 | 21, 15 | 2018-03-15 | 2018-04-30 | 33d |  |  |  |  | 371h |
| 23 | 3.1 | Ajout / modification d'un bien | 2d | 2018-03-15 | 2018-03-16 | 21 | 2018-03-15 | 2018-03-16 | 2d | 26d | 6d |  | Girard Paul | 14h |
| 24 | 3.2 | Ajout / modification d'un client | 2d | 2018-03-15 | 2018-03-16 | 21 | 2018-03-15 | 2018-03-16 | 2d | 26d | 6d |  | Kevin Hadjari | 14h |
| 25 | 3.3 | Ajout / modification d'un commercial | 2d | 2018-03-15 | 2018-03-16 | 21 | 2018-03-15 | 2018-03-16 | 2d | 26d | 6d |  | Léa Ries | 14h |
| 26 | 3.4 | Fiche de souhaits | 2d | 2018-03-15 | 2018-03-16 | 21 | 2018-03-15 | 2018-03-16 | 2d | 26d | 6d |  | Vincent Picot | 14h |
| 27 | 3.5 | Création d'une visite | 2d | 2018-03-19 | 2018-03-20 |  | 2018-03-19 | 2018-03-20 | 2d | 24d | 4d | start no earlier than 2018-03-19 | Vincent Picot | 14h |
| 28 | 3.6 | Création proposition de visite | 2d | 2018-03-19 | 2018-03-20 | 21 | 2018-03-19 | 2018-03-20 | 2d | 24d | 4d | start no earlier than 2018-03-19 | Kevin Hadjari | 14h |
| 29 | 3.7 | Vue commerciaux | 3d | 2018-03-19 | 2018-03-21 | 21 | 2018-03-19 | 2018-03-21 | 3d | 23d | 3d | start no earlier than 2018-03-19 | Léa Ries | 21h |
| 30 | 3.8 | Catalogue des biens | 2d | 2018-03-19 | 2018-03-20 | 21 | 2018-03-19 | 2018-03-20 | 2d | 24d | 4d | start no earlier than 2018-03-19 | Girard Paul | 14h |
| 31 | 3.9 | Recherche d'un client | 3d | 2018-03-22 | 2018-03-26 | 21 | 2018-03-22 | 2018-03-26 | 3d | 20d | 0d | start no earlier than 2018-03-22 | Kevin Hadjari | 21h |
| 32 | 3.10 | Recherche d'un bien | 3d | 2018-03-22 | 2018-03-26 | 21 | 2018-03-22 | 2018-03-26 | 3d | 20d | 0d | start no earlier than 2018-03-22 | Girard Paul | 21h |
| 33 | 3.11 | Tests et corrections éventuelles | 4d | 2018-03-27 | 2018-03-30 | 23, 24, 25, 26, 27, 28, 29, 30, 31, 32 | 2018-03-27 | 2018-03-30 | 4d | 20d | 0d |  | Girard Paul; Kevin Hadjari; Léa Ries; Vincent Picot | 112h |

Notes:
- 1: Il s'agit d'une tâche récapitulative. Utilisez les tâches récapitulatives pour organiser votre projet en sections.
- 23: Les tâches épinglées sont des tâches planifiées manuellement. Utilisez-les quand vous ne voulez pas que Project déplace la tâche. Vous pouvez également taper du texte libre dans les champs de durée, début et fin ou les laisser vierges si vous ne disposez pas de l'ensemble des informations.

| ID | WBS | Task | Duration | Start | Finish | Predecessors | Baseline start | Baseline finish | Baseline duration | Total slack | Free slack | Constraint | Resources | Work |
| --- | --- | --- | --- | --- | --- | --- | --- | --- | --- | --- | --- | --- | --- | --- |
| 34 | 3.12 | **Pilotage et démo** | 4d | 2018-03-15 | 2018-03-20 |  | 2018-03-15 | 2018-03-20 | 4d | 29d |  |  |  | 28h |
| 35 | 3.12.1 | Préparation point d'avancement | 4d | 2018-03-15 | 2018-03-20 |  | 2018-03-15 | 2018-03-20 | 4d | 29d |  |  | Sebastien Cornibé | 28h |
| 36 | 3.13 | Conception du scénario de la démo | 5d | 2018-03-26 | 2018-03-30 | 1, 16 | 2018-03-26 | 2018-03-30 | 5d | 20d | 0d | start no earlier than 2018-03-26 | Sebastien Cornibé | 35h |
| 37 | 3.14 | Entrainement démo | 1d | 2018-04-02 | 2018-04-02 | 36, 33 | 2018-04-02 | 2018-04-02 | 1d | 20d |  |  | Girard Paul; Kevin Hadjari; Léa Ries; Sebastien Cornibé; Vincent Picot | 35h |
